# SME GROWTH HUB

Schedule from MS Project XML, 2024-01-21 to 2024-09-30, A marks actual dates.

## Calendars

- Standard: Mon-Fri 08:00-12:00, 13:00-17:00; Sat-Sun off.

## Schedule

| ID | WBS | Task | Type | Duration | Start | Finish | Predecessors | Complete | Constraint | Text1 | Text5 | Text6 | Text2 | Text3 |
| --- | --- | --- | --- | --- | --- | --- | --- | --- | --- | --- | --- | --- | --- | --- |
| 1 | 1 | Status Key | manual | 0d | 2024-01-21 | 2024-01-21 |  |  |  |  |  |  |  |  |
| 2 | 2 | Not Started | manual | 0d | 2024-01-21 | 2024-01-21 |  |  |  | Red |  |  |  |  |
| 3 | 3 | On Hold | manual | 0d | 2024-01-21 | 2024-01-21 |  |  |  | Yellow |  |  |  |  |
| 4 | 4 | In Progress | manual | 0d | 2024-01-21 | 2024-01-21 |  |  |  | Green |  |  |  |  |
| 5 | 5 | Complete | manual | 0d | 2024-01-21 | 2024-01-21 |  |  |  | Blue |  |  |  |  |
| 7 | 7 | SME GOWTH HUB |  | 182d | 2024-01-21 | 2024-09-30 |  |  | start no earlier than 2024-01-21 | Green | 01/21/24 | 09/30/24 |  |  |
| 8 | 8 | **Planning and Preparation Phase** |  | 11d | 2024-01-21 A | 2024-02-02 |  | 100% | start no earlier than 2024-01-21 | Blue | 01/21/24 | 02/02/24 | High | Project Manager |
| 9 | 8.1 | **Define Project Scope and Objectives** |  | 7d | 2024-01-21 A | 2024-01-29 |  | 100% |  | Blue | 01/21/24 | 01/29/24 | High | Project Manager |
| 10 | 8.1.1 | Identify key features and services of SME Growth hub. |  | 3d | 2024-01-21 A | 2024-01-23 |  | 100% |  | Blue | 01/21/24 | 01/23/24 | High | Project Manager |
| 11 | 8.1.2 | Set project goals and objectives |  | 4d | 2024-01-24 A | 2024-01-29 | 10 | 100% |  | Blue | 01/24/24 | 01/29/24 | High | Project Manager |
| 12 | 8.2 | **Assemble Project Team** |  | 2d | 2024-01-30 A | 2024-01-31 |  | 100% |  | Blue | 01/30/24 | 01/31/24 | High | Project Manager |
| 13 | 8.2.1 | Appoint key team members. |  | 1d | 2024-01-30 A | 2024-01-30 | 11 | 100% |  | Blue | 01/30/24 | 01/30/24 | High | Project Manager |
| 14 | 8.2.2 | Clarify roles and responsibilities. |  | 1d | 2024-01-31 A | 2024-01-31 | 13 | 100% |  | Blue | 01/31/24 | 01/31/24 | High | Project Manager |
| 15 | 8.3 | **Stakeholder Analysis and Engagement** |  | 2d | 2024-02-01 A | 2024-02-02 |  | 100% |  | Blue | 02/01/24 | 02/02/24 | High | Project Manager |
| 16 | 8.3.1 | Identify and engage with key stakeholders |  | 1d | 2024-02-01 A | 2024-02-01 | 14 | 100% |  | Blue | 02/01/24 | 02/01/24 | High | Project Manager |
| 17 | 8.3.2 | Determine their roles and level of involvement |  | 1d | 2024-02-02 A | 2024-02-02 | 16 | 100% |  | Blue | 02/02/24 | 02/02/24 | High | Project Manager |
| 18 | 8.4 | **Develop Project Plan and Schedule** |  | 1d | 2024-02-02 A | 2024-02-02 |  | 100% |  | Blue | 02/02/24 | 02/02/24 | High | Project Manager |
| 19 | 8.4.1 | Outline tasks, milestones, and timelines. |  | 1d | 2024-02-02 A | 2024-02-02 |  | 100% |  | Blue | 02/02/24 | 02/02/24 | High | Project Manager |
| 20 | 8.4.2 | Establish dependencies and resource allocation |  | 1d | 2024-02-02 A | 2024-02-02 |  | 100% |  | Blue | 02/02/24 | 02/02/24 | High | Project Manager |
| 21 | 9 | **Platform Development Phase** |  | 56d | 2024-02-05 | 2024-04-22 |  |  | start no earlier than 2024-02-05 | Red | 02/05/24 | 04/22/24 | High | Technology Lead |
| 22 | 9.1 | **Platform Design and Features** |  | 28d | 2024-02-05 | 2024-03-13 |  |  |  | Red | 02/05/24 | 03/13/24 | High | Technology Lead |
| 23 | 9.1.1 | Work with designers and developers to finalize platform design and features. |  | 22d | 2024-02-05 | 2024-03-05 | 20 |  |  | Red | 02/05/24 | 03/05/24 | High | Technology Lead |
| 24 | 9.1.2 | Determine necessary integrations and functionalities. |  | 6d | 2024-03-06 | 2024-03-13 | 23 |  |  | Red | 03/06/24 | 03/13/24 | High | Technology Lead |
| 25 | 9.2 | **Develop Minimum Viable Product (MVP)** |  | 17d | 2024-03-14 | 2024-04-05 |  |  |  | Red | 03/14/24 | 04/05/24 | High | Technology Lead |
| 26 | 9.2.1 | Start building the core features of the platform. |  | 11d | 2024-03-14 | 2024-03-28 | 24 |  |  | Red | 03/14/24 | 03/28/24 | High | Technology Lead |
| 27 | 9.2.2 | Conduct internal testing and iterations. |  | 6d | 2024-03-29 | 2024-04-05 | 26 |  |  | Red | 03/29/24 | 04/05/24 | High | Technology Lead |

| ID | WBS | Task | Duration | Start | Finish | Predecessors | Constraint | Text1 | Text2 | Text3 | Text5 | Text6 |
| --- | --- | --- | --- | --- | --- | --- | --- | --- | --- | --- | --- | --- |
| 28 | 9.3 | **User Testing and Feedback** | 11d | 2024-04-08 | 2024-04-22 |  |  | Red | High | Technology Lead | 04/08/24 | 04/22/24 |
| 29 | 9.3.1 | Release MVP to a select group for testing and feedback. | 6d | 2024-04-08 | 2024-04-15 | 27 |  | Red | High | Technology Lead | 04/08/24 | 04/15/24 |
| 30 | 9.3.2 | Iterate based on user input. | 5d | 2024-04-16 | 2024-04-22 | 29 |  | Red | High | Technology Lead | 04/16/24 | 04/22/24 |
| 31 | 10 | **Content Creation and Partnerships Phase** | 55d | 2024-04-23 | 2024-07-08 |  | start no earlier than 2024-04-23 | Red | High | Business Development Manager | 04/23/24 | 07/08/24 |
| 32 | 10.1 | **Content Development** | 24d | 2024-04-23 | 2024-05-24 |  |  | Red | High | Business Development Manager | 04/23/24 | 05/24/24 |
| 33 | 10.1.1 | Create SME development content such as business skills courses, funding programs posts and mentorship programs. | 16d | 2024-04-23 | 2024-05-14 | 30 |  | Red | High | Business Development Manager | 04/23/24 | 05/14/24 |
| 34 | 10.1.2 | Ensure content aligns with platform goals and user needs. | 8d | 2024-05-15 | 2024-05-24 | 33 |  | Red | High | Business Development Manager | 05/15/24 | 05/24/24 |
| 35 | 10.2 | **Partnership Development** | 31d | 2024-05-27 | 2024-07-08 |  |  | Red | High | Business Development Manager | 05/27/24 | 07/08/24 |
| 36 | 10.2.1 | Identify and cultivate partnerships with industry experts, mentors, investors, and support organizations. | 22d | 2024-05-27 | 2024-06-25 | 34 |  | Red | High | Business Development Manager | 05/27/24 | 06/25/24 |
| 37 | 10.2.2 | Establish collaboration agreements and partnerships. | 9d | 2024-06-26 | 2024-07-08 | 36 |  | Red | High | Business Development Manager | 06/26/24 | 07/08/24 |
| 38 | 11 | **Marketing and Launch Phase** | 22d | 2024-07-09 | 2024-08-07 |  | start no earlier than 2024-07-09 | Red | High | Marketing Manager | 07/09/24 | 08/07/24 |
| 39 | 11.1 | **Develop Marketing Strategy and Materials** | 12d | 2024-07-09 | 2024-07-24 |  |  | Red | High | Marketing Manager | 07/09/24 | 07/24/24 |
| 40 | 11.1.1 | Create a comprehensive marketing plan, including digital campaigns, social media, and content marketing. | 6d | 2024-07-09 | 2024-07-16 | 37 |  | Red | High | Marketing Manager | 07/09/24 | 07/16/24 |
| 41 | 11.1.2 | Prepare marketing materials and promotional content. | 6d | 2024-07-17 | 2024-07-24 | 40 |  | Red | High | Marketing Manager | 07/17/24 | 07/24/24 |
| 42 | 11.2 | **Pre-Launch Marketing Campaigns** | 10d | 2024-07-25 | 2024-08-07 |  |  | Red | High | Marketing Manager | 07/25/24 | 08/07/24 |
| 43 | 11.2.1 | Start pre-launch marketing campaigns to build anticipation. | 5d | 2024-07-25 | 2024-07-31 | 41 |  | Red | High | Marketing Manager | 07/25/24 | 07/31/24 |
| 44 | 11.2.2 | Generate buzz and attract initial users. | 5d | 2024-08-01 | 2024-08-07 | 43 |  | Red | High | Marketing Manager | 08/01/24 | 08/07/24 |
| 45 | 12 | **Launch and Post-Launch Optimization Phase** | 38d | 2024-08-08 | 2024-09-30 |  | start no earlier than 2024-08-08 | Red | High | Project Team | 08/08/24 | 09/30/24 |
| 46 | 12.1 | **Platform Launch** | 6d | 2024-08-08 | 2024-08-15 |  |  | Red | High | Project Team | 08/08/24 | 08/15/24 |
| 47 | 12.1.1 | Officially launch SME Growth Hub. | 1d | 2024-08-08 | 2024-08-08 | 44 |  | Red | High | Project Team | 08/08/24 | 08/08/24 |
| 48 | 12.1.2 | Monitor platform performance and user engagement. | 5d | 2024-08-09 | 2024-08-15 | 47 |  | Red | High | Project Manager and Data Analyst | 08/09/24 | 08/15/24 |
| 49 | 12.2 | **Post-Launch Optimization** | 32d | 2024-08-16 | 2024-09-30 |  |  | Red | High | Project Manager | 08/16/24 | 09/30/24 |
| 50 | 12.2.1 | Analyze user feedback and make necessary adjustments to improve user experience. | 11d | 2024-08-16 | 2024-08-30 | 48 |  | Red | High | Data Analyst | 08/16/24 | 08/30/24 |
| 51 | 12.2.2 | Implement additional features and enhancements based on user needs and market trends. | 21d | 2024-09-02 | 2024-09-30 | 50 |  | Red | High | Technology Lead and Project Manager | 09/02/24 | 09/30/24 |
